# Plan_Union_Interation

Schedule from MS Project, 2010-06-03 to 2010-07-14, A marks actual dates.

## Calendars

- Standard: Mon-Fri 08:00-12:00, 13:00-17:00; Sat-Sun off.

## Resources

| Resource |
| --- |
| Hoàng Thị Thu Huyền |
| Đào Tuấn Anh |
| Dương Hải Phong |
| Cản Mạnh Tuấn |
| Đỗ Nam Sơn |

## Schedule

| ID | WBS | Task | Duration | Start | Finish | Predecessors | Complete | Remaining | Total slack | Constraint | Resources | Work | Actual work |
| --- | --- | --- | --- | --- | --- | --- | --- | --- | --- | --- | --- | --- | --- |
| 1 | 1 | **Requirement** | 15d | 2010-06-03 A | 2010-06-23 A |  | 100% |  |  |  |  | 120h | 120h |
| 2 | 1.1 | Viết yêu cầu | 5d | 2010-06-03 A | 2010-06-09 A |  | 100% |  |  |  | Hoàng Thị Thu Huyền | 40h | 40h |
| 3 | 1.2 | Thu thập từ các ban | 10d | 2010-06-10 A | 2010-06-23 A | 2 | 100% |  |  |  | Hoàng Thị Thu Huyền | 80h | 80h |
| 4 | 2 | **Code** | 30d? | 2010-06-03 A | 2010-07-14 |  | 95% | 1.64d? | 0d |  |  | 416h | 416h |
| 5 | 2.1 | Quản lý | 1d? | 2010-06-03 A | 2010-06-03 A |  | 100% |  |  |  | Đào Tuấn Anh | 8h | 8h |
| 6 | 2.2 | Quản lý media | 1d? | 2010-06-03 A | 2010-06-03 A |  | 100% |  |  |  | Đào Tuấn Anh | 8h | 8h |
| 7 | 2.3 | Tin tức | 1d? | 2010-06-03 A | 2010-06-03 A |  | 100% |  |  |  | Đào Tuấn Anh | 8h | 8h |
| 8 | 2.4 | Phản hồi | 1d? | 2010-06-03 A | 2010-06-03 A |  | 100% |  |  |  | Đào Tuấn Anh | 8h | 8h |
| 9 | 2.5 | Sự kiện | 3d | 2010-06-03 A | 2010-06-07 A |  | 100% |  |  |  | Đào Tuấn Anh | 24h | 24h |
| 10 | 2.6 | Lấy tin tự động | 5d | 2010-06-03 A | 2010-06-09 A |  | 100% |  |  |  | Dương Hải Phong | 40h | 40h |
| 11 | 2.7 | Danh bạ | 1d? | 2010-06-03 A | 2010-06-03 A |  | 100% |  |  |  | Đào Tuấn Anh | 8h | 8h |
| 12 | 2.8 | Văn bản | 5d | 2010-06-08 A | 2010-06-14 A | 9, 11 | 100% |  |  |  | Đào Tuấn Anh | 40h | 40h |
| 13 | 2.9 | Lịch làm việc | 4d | 2010-06-15 A | 2010-06-18 A | 12 | 100% |  |  |  | Đào Tuấn Anh | 32h | 32h |
| 14 | 2.10 | Đặt phòng họp | 2d | 2010-06-21 A | 2010-06-22 A | 13 | 100% |  |  |  | Đào Tuấn Anh | 16h | 16h |
| 15 | 2.11 | Namecard | 10d | 2010-07-01 A | 2010-07-14 A |  | 100% |  |  | start no earlier than 2010-07-01 | Đỗ Nam Sơn | 80h | 80h |
| 16 | 2.12 | Bản tin thông báo | 6d | 2010-06-28 A | 2010-07-05 A |  | 100% |  |  | start no earlier than 2010-06-28 | Đào Tuấn Anh | 48h | 48h |
| 17 | 2.13 | **Votting** | 1d? | 2010-06-03 | 2010-06-03 |  |  |  | 29d |  |  |  |  |
| 18 | 2.13.1 | Chất lg bài viết | 1d? | 2010-06-03 | 2010-06-03 |  |  |  | 33d |  |  |  |  |
| 19 | 2.13.2 | Bình chọn trong bài viết | 1d? | 2010-06-03 | 2010-06-03 |  |  |  | 33d |  |  |  |  |
| 20 | 2.13.3 | Cuộc thi bình chọn (ảnh, video, …) | 1d? | 2010-06-03 | 2010-06-03 |  |  |  | 33d |  |  |  |  |
| 21 | 2.14 | **Layout Web** | 3d | 2010-07-01 A | 2010-07-05 A |  | 100% |  |  |  |  | 96h | 96h |
| 22 | 2.14.1 | Tin tức | 3d | 2010-07-01 A | 2010-07-05 A |  | 100% |  |  | finish no earlier than 2010-07-05 | Cản Mạnh Tuấn | 24h | 24h |
| 23 | 2.14.2 | Diễn đàn | 3d | 2010-07-01 A | 2010-07-05 A |  | 100% |  |  | finish no earlier than 2010-07-05 | Cản Mạnh Tuấn | 24h | 24h |
| 24 | 2.14.3 | Thông tin cá nhân | 3d | 2010-07-01 A | 2010-07-05 A |  | 100% |  |  | finish no earlier than 2010-07-05 | Cản Mạnh Tuấn | 24h | 24h |
| 25 | 2.14.4 | Danh bạ | 3d | 2010-07-01 A | 2010-07-05 A |  | 100% |  |  | finish no earlier than 2010-07-05 | Cản Mạnh Tuấn | 24h | 24h |

| ID | WBS | Task | Duration | Start | Finish | Complete | Remaining | Total slack | Constraint | Resources | Work | Actual work |
| --- | --- | --- | --- | --- | --- | --- | --- | --- | --- | --- | --- | --- |
| 26 | 3 | **Test** | 7d | 2010-07-01 A | 2010-07-09 | 56% | 3.09d | 3d |  |  | 672h | 375.2h |
| 27 | 3.1 | Quản lý | 7d | 2010-07-01 A | 2010-07-09 A | 100% |  |  | finish no earlier than 2010-07-09 | Hoàng Thị Thu Huyền | 56h | 56h |
| 28 | 3.2 | Quản lý media | 7d | 2010-07-01 A | 2010-07-09 | 50% | 3.5d | 3d | finish no earlier than 2010-07-09 | Hoàng Thị Thu Huyền | 56h | 28h |
| 29 | 3.3 | Tin tức | 7d | 2010-07-01 A | 2010-07-09 | 50% | 3.5d | 3d | finish no earlier than 2010-07-09 | Hoàng Thị Thu Huyền | 56h | 28h |
| 30 | 3.4 | Phản hồi | 7d | 2010-07-01 A | 2010-07-09 A | 100% |  |  | finish no earlier than 2010-07-09 | Hoàng Thị Thu Huyền | 56h | 56h |
| 31 | 3.5 | Sự kiện | 7d | 2010-07-01 | 2010-07-09 |  |  | 3d | finish no earlier than 2010-07-09 | Hoàng Thị Thu Huyền | 56h |  |
| 32 | 3.6 | Lấy tin tự động | 7d | 2010-07-01 A | 2010-07-09 A | 100% |  |  | finish no earlier than 2010-07-09 | Hoàng Thị Thu Huyền | 56h | 56h |
| 33 | 3.7 | Văn bản | 7d | 2010-07-01 | 2010-07-09 |  |  | 3d | finish no earlier than 2010-07-09 | Hoàng Thị Thu Huyền | 56h |  |
| 34 | 3.8 | Lịch làm việc | 7d | 2010-07-01 A | 2010-07-09 | 50% | 3.5d | 3d | finish no earlier than 2010-07-09 | Hoàng Thị Thu Huyền | 56h | 28h |
| 35 | 3.9 | Namecard | 7d | 2010-07-01 A | 2010-07-09 | 50% | 3.5d | 3d | finish no earlier than 2010-07-09 | Hoàng Thị Thu Huyền | 56h | 28h |
| 36 | 3.10 | Layout | 7d | 2010-07-01 A | 2010-07-09 | 70% | 2.1d | 3d | finish no earlier than 2010-07-09 | Hoàng Thị Thu Huyền | 56h | 39.2h |
| 37 | 3.11 | Bản tin thông báo | 7d | 2010-07-01 A | 2010-07-09 | 50% | 3.5d | 3d | finish no earlier than 2010-07-09 | Hoàng Thị Thu Huyền | 56h | 28h |
| 38 | 3.12 | Văn bản | 7d | 2010-07-01 A | 2010-07-09 | 50% | 3.5d | 3d | finish no earlier than 2010-07-09 | Hoàng Thị Thu Huyền | 56h | 28h |
