# Plan_VietNamNet_v0_Interation

Schedule from MS Project, 2010-09-06 to 2010-10-18, status date 2010-09-06.

## Calendars

- Standard: Mon-Fri 08:00-12:00, 13:00-17:00; Sat-Sun off.

## Resources

| Resource |
| --- |
| Đỗ Nam Sơn |
| Đào Tuấn Anh |
| Cản Mạnh Tuấn |
| Lục Văn Tiến |
| Hoàng Thu Huyền |
| Lê Nguyễn Lâm |

## Schedule

| ID | WBS | Task | Duration | Start | Finish | Predecessors | Total slack | Free slack | Constraint | Resources | Work |
| --- | --- | --- | --- | --- | --- | --- | --- | --- | --- | --- | --- |
| 1 | 1 | **Back-end** | 7d | 2010-09-06 | 2010-09-14 |  | 21d | 0d |  |  | 88h |
| 2 | 1.1 | Nhuận bút | 4d | 2010-09-06 | 2010-09-09 |  | 21d | 0d |  | Đỗ Nam Sơn | 32h |
| 3 | 1.2 | Tracking | 4d | 2010-09-09 | 2010-09-14 | 6 | 21d | 0d |  | Đào Tuấn Anh | 32h |
| 4 | 1.3 | Thống kê, báo cáo | 3d | 2010-09-10 | 2010-09-14 | 2 | 20d |  |  | Đỗ Nam Sơn | 24h |
| 5 | 2 | **Font-end** | 28d | 2010-09-06 | 2010-10-13 |  | 0d |  |  |  | 608h |
| 6 | 2.1 | Quy định khi coding front-end | 2d | 2010-09-07 | 2010-09-08 |  | 21d | 0d | start no earlier than 2010-09-07 | Đào Tuấn Anh | 16h |
| 7 | 2.2 | **Trang Tiếng Anh** | 17d | 2010-09-06 | 2010-09-28 |  | 0d |  |  |  | 288h |
| 8 | 2.2.1 | Thiết kế | 8d | 2010-09-06 | 2010-09-15 |  | 0d |  |  | Lê Nguyễn Lâm | 64h |
| 9 | 2.2.2 | **Dựng trang** | 9d | 2010-09-16 | 2010-09-28 | 8 | 4d |  |  |  | 224h |
| 10 | 2.2.2.1 | Giao diện chung | 2d | 2010-09-16 | 2010-09-17 |  | 4d | 0d |  | Đào Tuấn Anh | 16h |
| 11 | 2.2.2.2 | Quảng cáo | 2d | 2010-09-20 | 2010-09-21 | 10 | 4d | 0d |  | Đào Tuấn Anh | 16h |
| 12 | 2.2.2.3 | Tracking | 2d | 2010-09-22 | 2010-09-23 | 11 | 4d | 0d |  | Đào Tuấn Anh | 16h |
| 13 | 2.2.2.4 | Các hiệu ứng | 2d | 2010-09-24 | 2010-09-27 | 12 | 4d | 0d |  | Đào Tuấn Anh | 16h |
| 14 | 2.2.2.5 | Trang chủ | 3d | 2010-09-16 | 2010-09-20 | 8 | 9d | 0d |  | Cản Mạnh Tuấn | 24h |
| 15 | 2.2.2.6 | Phản hồi bài viết | 1d | 2010-09-21 | 2010-09-21 | 14 | 9d |  |  | Cản Mạnh Tuấn | 8h |
| 16 | 2.2.2.7 | **Photo** | 2d | 2010-09-27 | 2010-09-28 |  | 4d |  |  |  | 16h |
| 17 | 2.2.2.7.1 | Slide show | 1d | 2010-09-28 | 2010-09-28 | 13 | 4d |  |  | Đào Tuấn Anh | 8h |
| 18 | 2.2.2.7.2 | Thông tin khác | 1d | 2010-09-27 | 2010-09-27 | 25 | 5d |  |  | Cản Mạnh Tuấn | 8h |
| 19 | 2.2.2.8 | Các Danh mục | 4d | 2010-09-16 | 2010-09-21 | 8 | 6d | 0d |  | Lục Văn Tiến | 32h |
| 20 | 2.2.2.9 | Tin bài chi tiết | 2d | 2010-09-22 | 2010-09-23 | 19 | 6d | 0d |  | Lục Văn Tiến | 16h |
| 21 | 2.2.2.10 | In bài viết | 1d | 2010-09-24 | 2010-09-24 | 20 | 6d |  |  | Lục Văn Tiến | 8h |
| 22 | 2.2.2.11 | Thăm dò | 3d | 2010-09-16 | 2010-09-20 | 8 | 5d | 0d |  | Đỗ Nam Sơn | 24h |
| 23 | 2.2.2.12 | Tìm kiếm | 1d | 2010-09-21 | 2010-09-21 | 22 | 5d | 0d |  | Đỗ Nam Sơn | 8h |
| 24 | 2.2.2.13 | Email bài viết | 1d | 2010-09-22 | 2010-09-22 | 23 | 5d | 0d |  | Đỗ Nam Sơn | 8h |
| 25 | 2.2.2.14 | RSS | 2d | 2010-09-23 | 2010-09-24 | 24 | 5d | 0d |  | Đỗ Nam Sơn | 16h |

| ID | WBS | Task | Duration | Start | Finish | Predecessors | Total slack | Free slack | Resources | Work |
| --- | --- | --- | --- | --- | --- | --- | --- | --- | --- | --- |
| 26 | 2.3 | **Trang Clip** | 9d | 2010-09-29 | 2010-10-11 |  | 2d | 0d |  |  |
| 27 | 2.3.1 | Chưa có plan | 9d | 2010-09-29 | 2010-10-11 | 7 | 2d |  |  |  |
| 28 | 2.4 | **Trang Thể thao** | 20d | 2010-09-16 | 2010-10-13 |  | 0d |  |  | 304h |
| 29 | 2.4.1 | Thiết kế | 11d | 2010-09-16 | 2010-09-30 | 8 | 0d |  | Lê Nguyễn Lâm | 88h |
| 30 | 2.4.2 | **Dựng trang** | 9d | 2010-10-01 | 2010-10-13 | 29 | 0d |  |  | 216h |
| 31 | 2.4.2.1 | Giao diện chung | 1d | 2010-10-01 | 2010-10-01 |  | 2d | 0d | Đào Tuấn Anh | 8h |
| 32 | 2.4.2.2 | Quảng cáo | 1d | 2010-10-04 | 2010-10-04 | 31 | 2d | 0d | Đào Tuấn Anh | 8h |
| 33 | 2.4.2.3 | Tracking | 1d | 2010-10-05 | 2010-10-05 | 32 | 2d | 0d | Đào Tuấn Anh | 8h |
| 34 | 2.4.2.4 | Các hiệu ứng | 2d | 2010-10-06 | 2010-10-07 | 33 | 2d | 0d | Đào Tuấn Anh | 16h |
| 35 | 2.4.2.5 | Trang chủ | 3d | 2010-10-01 | 2010-10-05 | 29 | 5d | 0d | Cản Mạnh Tuấn | 24h |
| 36 | 2.4.2.6 | Phản hồi bài viết | 1d | 2010-10-06 | 2010-10-06 | 35 | 5d |  | Cản Mạnh Tuấn | 8h |
| 37 | 2.4.2.7 | **Photo** | 3d | 2010-10-08 | 2010-10-12 |  | 0d |  |  | 16h |
| 38 | 2.4.2.7.1 | Slide show | 1d | 2010-10-08 | 2010-10-08 | 34 | 2d | 0d | Đào Tuấn Anh | 8h |
| 39 | 2.4.2.7.2 | Thông tin khác | 1d | 2010-10-12 | 2010-10-12 | 49 | 0d |  | Cản Mạnh Tuấn | 8h |
| 40 | 2.4.2.8 | **Video** | 3d | 2010-10-11 | 2010-10-13 |  | 0d |  |  | 16h |
| 41 | 2.4.2.8.1 | Video | 1d | 2010-10-11 | 2010-10-11 | 38 | 2d |  | Đào Tuấn Anh | 8h |
| 42 | 2.4.2.8.2 | Thông tin khác | 1d | 2010-10-13 | 2010-10-13 | 39 | 0d |  | Cản Mạnh Tuấn | 8h |
| 43 | 2.4.2.9 | Các Danh mục | 4d | 2010-10-01 | 2010-10-06 | 29 | 2d | 0d | Lục Văn Tiến | 32h |
| 44 | 2.4.2.10 | Tin bài chi tiết | 2d | 2010-10-07 | 2010-10-08 | 43 | 2d | 0d | Lục Văn Tiến | 16h |
| 45 | 2.4.2.11 | In bài viết | 1d | 2010-10-11 | 2010-10-11 | 44 | 2d |  | Lục Văn Tiến | 8h |
| 46 | 2.4.2.12 | Thăm dò | 3d | 2010-10-01 | 2010-10-05 | 29 | 0d |  | Đỗ Nam Sơn | 24h |
| 47 | 2.4.2.13 | Tìm kiếm | 1d | 2010-10-06 | 2010-10-06 | 46 | 0d |  | Đỗ Nam Sơn | 8h |
| 48 | 2.4.2.14 | Email bài viết | 1d | 2010-10-07 | 2010-10-07 | 47 | 0d |  | Đỗ Nam Sơn | 8h |
| 49 | 2.4.2.15 | RSS | 2d | 2010-10-08 | 2010-10-11 | 48 | 0d |  | Đỗ Nam Sơn | 16h |

| ID | WBS | Task | Duration | Start | Finish | Predecessors | Total slack | Free slack | Resources | Work |
| --- | --- | --- | --- | --- | --- | --- | --- | --- | --- | --- |
| 50 | 3 | **Update** | 5d | 2010-09-06 | 2010-09-10 |  | 26d |  |  | 64h |
| 51 | 3.1 | LayoutDAO | 3d | 2010-09-06 | 2010-09-08 |  | 26d | 0d | Cản Mạnh Tuấn; Đào Tuấn Anh | 48h |
| 52 | 3.2 | User, Visit | 2d | 2010-09-09 | 2010-09-10 | 51 | 26d |  | Đào Tuấn Anh | 16h |
| 53 | 4 | **Test** | 24d | 2010-09-15 | 2010-10-18 |  | 0d |  |  | 96h |
| 54 | 4.1 | Back-end | 3d | 2010-09-15 | 2010-09-17 | 1 | 21d |  | Hoàng Thu Huyền | 24h |
| 55 | 4.2 | Trang Tiếng Anh | 3d | 2010-09-29 | 2010-10-01 | 7 | 11d |  | Hoàng Thu Huyền | 24h |
| 56 | 4.3 | Trang Clip | 3d | 2010-10-12 | 2010-10-14 | 26 | 2d |  | Hoàng Thu Huyền | 24h |
| 57 | 4.4 | Trang Thể thao | 3d | 2010-10-14 | 2010-10-18 | 28 | 0d |  | Hoàng Thu Huyền | 24h |
