# Plan_VietNamNet_v0_Interation

Schedule from MS Project, 2010-09-06 to 2010-10-15, status date 2010-09-06, A marks actual dates.

## Calendars

- Standard: Mon-Fri 08:00-12:00, 13:00-17:00; Sat-Sun off.

## Resources

| Resource |
| --- |
| Đỗ Nam Sơn |
| Đào Tuấn Anh |
| Cản Mạnh Tuấn |
| Lục Văn Tiến |
| Hoàng Thu Huyền |
| Lê Nguyễn Lâm |
| Dương Hải Phong |

## Schedule

| ID | WBS | Task | Duration | Start | Finish | Predecessors | Complete | Remaining | Total slack | Free slack | Constraint | Resources | Work | Actual work |
| --- | --- | --- | --- | --- | --- | --- | --- | --- | --- | --- | --- | --- | --- | --- |
| 1 | 1 | **Back-end** | 9d | 2010-09-06 A | 2010-09-16 |  | 80% | 1.8d | 18d | 0d |  |  | 112h | 89.6h |
| 2 | 1.1 | Nhuận bút | 5d | 2010-09-06 A | 2010-09-10 A |  | 100% |  |  |  |  | Đỗ Nam Sơn | 40h | 40h |
| 3 | 1.2 | Thống kê, báo cáo | 3d | 2010-09-13 A | 2010-09-15 A | 2 | 100% |  |  |  |  | Đỗ Nam Sơn | 24h | 24h |
| 4 | 1.3 | Chỉnh sửa, hoàn thiện CMS | 2d | 2010-09-15 A | 2010-09-16 A | 5 | 100% |  |  |  |  | Đào Tuấn Anh | 16h | 16h |
| 5 | 1.4 | Tracking | 4d | 2010-09-09 A | 2010-09-14 | 7 | 30% | 2.8d | 20d |  |  | Đào Tuấn Anh | 32h | 9.6h |
| 6 | 2 | **Font-end** | 27d | 2010-09-06 A | 2010-10-12 |  | 36% | 17.22d | 3d |  |  |  | 760h | 275.2h |
| 7 | 2.1 | Quy định khi coding front-end | 2d | 2010-09-07 A | 2010-09-08 A |  | 100% |  |  |  | start no earlier than 2010-09-07 | Đào Tuấn Anh | 16h | 16h |
| 8 | 2.2 | **Trang Clip** | 9d | 2010-09-08 A | 2010-09-20 A |  | 100% |  |  |  |  |  | 104h | 104h |
| 9 | 2.2.1 | Thiết kế | 1d | 2010-09-08 A | 2010-09-08 A |  | 100% |  |  |  | start no earlier than 2010-09-08 | Lê Nguyễn Lâm | 8h | 8h |
| 10 | 2.2.2 | Tạo, cấu hình db | 1d | 2010-09-09 A | 2010-09-09 A |  | 100% |  |  |  | start no earlier than 2010-09-09 | Đào Tuấn Anh | 8h | 8h |
| 11 | 2.2.3 | Chỉnh sửa giao diện | 2d | 2010-09-09 A | 2010-09-10 A | 9 | 100% |  |  |  |  | Cản Mạnh Tuấn | 16h | 16h |
| 12 | 2.2.4 | Thêm form gửi Video | 6d | 2010-09-13 A | 2010-09-20 A | 9 | 100% |  |  |  |  | Lục Văn Tiến | 48h | 48h |
| 13 | 2.2.5 | Deploy | 3d | 2010-09-13 A | 2010-09-15 A | 10, 12 | 100% |  |  |  |  | Đào Tuấn Anh | 24h | 24h |
| 14 | 2.3 | **Trang Union** | 2d | 2010-09-13 | 2010-09-14 |  |  |  | 23d |  |  |  | 16h |  |
| 15 | 2.3.1 | Chỉnh sửa phản hồi | 2d | 2010-09-13 | 2010-09-14 | 11 |  |  | 23d |  |  | Cản Mạnh Tuấn | 16h |  |
| 16 | 2.4 | **Trang Mobile** | 2d | 2010-09-16 A | 2010-09-17 A |  | 100% |  |  |  |  |  | 24h | 24h |
| 17 | 2.4.1 | Thiết kế | 1d | 2010-09-16 A | 2010-09-16 A |  | 100% |  |  |  | start no earlier than 2010-09-16 | Lê Nguyễn Lâm | 8h | 8h |
| 18 | 2.4.2 | Crawling | 1d | 2010-09-17 A | 2010-09-17 A | 17 | 100% |  |  |  |  | Dương Hải Phong | 8h | 8h |
| 19 | 2.4.3 | Coding | 1d | 2010-09-17 A | 2010-09-17 A | 17 | 100% |  |  |  |  | Đào Tuấn Anh | 8h | 8h |
| 20 | 2.5 | **Rolo Service** | 2d | 2010-09-20 A | 2010-09-21 A |  | 100% |  |  |  |  |  | 24h | 24h |
| 21 | 2.5.1 | Lấy thông tin từ Rolo | 2d | 2010-09-20 A | 2010-09-21 A | 18 | 100% |  |  |  |  | Dương Hải Phong | 16h | 16h |
| 22 | 2.5.2 | Xuất thông tin ra API - webservice | 1d | 2010-09-20 A | 2010-09-20 A | 19 | 100% |  |  |  |  | Đào Tuấn Anh | 8h | 8h |
| 23 | 2.6 | **Trang Tiếng Anh** | 27d | 2010-09-06 A | 2010-10-12 |  | 19% | 21.98d | 0d |  |  |  | 576h | 107.2h |
| 24 | 2.6.1 | Thiết kế | 8d | 2010-09-06 A | 2010-09-15 A |  | 100% |  |  |  |  | Lê Nguyễn Lâm | 64h | 64h |

Notes:
- 2: Tài liệu: / - Requirement 60% (thiếu tài liệu USC) / - Database 100% / - Testing 100% / - UserGuide 0%/ Chưa đầy đủ tài liệu
- 5: Delay do trang clip bị chậm
- 12: Lý do chậm: / 1. Lŕm popup cho tňa soạn / 2. Phối hợp với anh Khuę chưa tốt / 3. Chưa těm hiểu rő yęu cầu khi lŕm
- 13: Nguyên nhân gây chậm: / 1. Streaming / 2. Sync file / 3. Share folder giữa 2 server / 4. Thêm form upload file gửi Tòa soạn

| ID | WBS | Task | Duration | Start | Finish | Predecessors | Complete | Remaining | Total slack | Free slack | Constraint | Resources | Work | Actual work |
| --- | --- | --- | --- | --- | --- | --- | --- | --- | --- | --- | --- | --- | --- | --- |
| 25 | 2.6.2 | **Dựng trang** | 8d | 2010-09-22 A | 2010-10-01 | 24, 16, 20 | 23% | 6.2d | 6d | 0d |  |  | 192h | 43.2h |
| 26 | 2.6.2.1 | Giao diện chung | 1d | 2010-09-22 | 2010-09-22 |  |  |  | 6d | 0d |  | Đào Tuấn Anh | 8h |  |
| 27 | 2.6.2.2 | Quảng cáo | 1d | 2010-09-23 | 2010-09-23 | 26 |  |  | 6d | 0d |  | Đào Tuấn Anh | 8h |  |
| 28 | 2.6.2.3 | Tracking | 2d | 2010-09-24 | 2010-09-27 | 27 |  |  | 6d | 0d |  | Đào Tuấn Anh | 16h |  |
| 29 | 2.6.2.4 | Các hiệu ứng | 1d | 2010-09-28 | 2010-09-28 | 28 |  |  | 6d | 0d |  | Đào Tuấn Anh | 8h |  |
| 30 | 2.6.2.5 | Trang chủ | 3d | 2010-09-27 | 2010-09-29 | 24 |  |  | 8d |  | start no earlier than 2010-09-27 | Cản Mạnh Tuấn | 24h |  |
| 31 | 2.6.2.6 | Các Danh mục | 3d | 2010-09-22 | 2010-09-24 | 24 |  |  | 7d | 0d |  | Lục Văn Tiến | 24h |  |
| 32 | 2.6.2.7 | Tin bài chi tiết | 1d | 2010-09-27 | 2010-09-27 | 31 |  |  | 7d | 0d |  | Lục Văn Tiến | 8h |  |
| 33 | 2.6.2.8 | In bài viết | 1d | 2010-09-28 | 2010-09-28 | 32 |  |  | 7d | 0d |  | Lục Văn Tiến | 8h |  |
| 34 | 2.6.2.9 | **Photo** | 1d | 2010-09-29 | 2010-09-29 |  |  |  | 6d |  |  |  | 16h |  |
| 35 | 2.6.2.9.1 | Slide show | 1d | 2010-09-29 | 2010-09-29 | 29 |  |  | 6d | 0d |  | Đào Tuấn Anh | 8h |  |
| 36 | 2.6.2.9.2 | Thông tin khác | 1d | 2010-09-29 | 2010-09-29 | 33 |  |  | 7d | 0d |  | Lục Văn Tiến | 8h |  |
| 37 | 2.6.2.10 | **Video** | 1d | 2010-09-30 | 2010-09-30 |  |  |  | 6d |  |  |  | 16h |  |
| 38 | 2.6.2.10.1 | Slide show | 1d | 2010-09-30 | 2010-09-30 | 35 |  |  | 6d | 0d |  | Đào Tuấn Anh | 8h |  |
| 39 | 2.6.2.10.2 | Thông tin khác | 1d | 2010-09-30 | 2010-09-30 | 36 |  |  | 7d |  |  | Lục Văn Tiến | 8h |  |
| 40 | 2.6.2.11 | Phản hồi bài viết | 1d | 2010-10-01 | 2010-10-01 | 38 |  |  | 6d |  |  | Đào Tuấn Anh | 8h |  |
| 41 | 2.6.2.12 | Thăm dò | 2d | 2010-09-22 A | 2010-09-23 | 24 | 70% | 0.6d | 12d |  |  | Đỗ Nam Sơn | 16h | 11.2h |
| 42 | 2.6.2.13 | Tìm kiếm | 1d | 2010-09-24 A | 2010-09-24 A | 41 | 100% |  |  |  |  | Đỗ Nam Sơn | 8h | 8h |
| 43 | 2.6.2.14 | Email bài viết | 1d | 2010-09-27 A | 2010-09-27 A | 42 | 100% |  |  |  |  | Đỗ Nam Sơn | 8h | 8h |
| 44 | 2.6.2.15 | RSS | 2d | 2010-09-28 A | 2010-09-29 A | 43 | 100% |  |  |  |  | Đỗ Nam Sơn | 16h | 16h |
| 45 | 2.6.3 | Deploy | 1d | 2010-10-04 | 2010-10-04 | 25 |  |  | 6d |  |  | Đào Tuấn Anh | 8h |  |
| 46 | 2.6.4 | **Trang Thể thao** | 19d | 2010-09-16 | 2010-10-12 |  |  |  | 0d |  |  |  | 312h |  |
| 47 | 2.6.4.1 | Thiết kế | 11d | 2010-09-16 | 2010-09-30 | 24 |  |  | 0d |  |  | Lê Nguyễn Lâm | 88h |  |
| 48 | 2.6.4.2 | **Dựng trang** | 7d | 2010-10-01 | 2010-10-11 | 47 |  |  | 0d |  |  |  | 216h |  |
| 49 | 2.6.4.2.1 | Giao diện chung | 1d | 2010-10-01 | 2010-10-01 |  |  |  | 0d |  |  | Đào Tuấn Anh | 8h |  |
| 50 | 2.6.4.2.2 | Quảng cáo | 1d | 2010-10-04 | 2010-10-04 | 49 |  |  | 0d |  |  | Đào Tuấn Anh | 8h |  |
| 51 | 2.6.4.2.3 | Tracking | 1d | 2010-10-05 | 2010-10-05 | 50 |  |  | 0d |  |  | Đào Tuấn Anh | 8h |  |
| 52 | 2.6.4.2.4 | Các hiệu ứng | 2d | 2010-10-06 | 2010-10-07 | 51 |  |  | 0d |  |  | Đào Tuấn Anh | 16h |  |
| 53 | 2.6.4.2.5 | Trang chủ | 3d | 2010-10-01 | 2010-10-05 | 47 |  |  | 1d | 0d |  | Cản Mạnh Tuấn | 24h |  |
| 54 | 2.6.4.2.6 | Phản hồi bài viết | 1d | 2010-10-06 | 2010-10-06 | 53 |  |  | 1d | 0d |  | Cản Mạnh Tuấn | 8h |  |

Notes:
- 41: Đã trię̉n khai front-end / Đang xây dựng lại đę̉ Tracking
- 42: done
- 43: done
- 44: Đã dựng phần RSS trang chủ / Chưa làm RSS trang cat

| ID | WBS | Task | Duration | Start | Finish | Predecessors | Complete | Remaining | Total slack | Free slack | Resources | Work | Actual work |
| --- | --- | --- | --- | --- | --- | --- | --- | --- | --- | --- | --- | --- | --- |
| 55 | 2.6.4.2.7 | **Photo** | 2d | 2010-10-07 | 2010-10-08 |  |  |  | 0d |  |  | 16h |  |
| 56 | 2.6.4.2.7.1 | Slide show | 1d | 2010-10-08 | 2010-10-08 | 52 |  |  | 0d |  | Đào Tuấn Anh | 8h |  |
| 57 | 2.6.4.2.7.2 | Thông tin khác | 1d | 2010-10-07 | 2010-10-07 | 54 |  |  | 1d | 0d | Cản Mạnh Tuấn | 8h |  |
| 58 | 2.6.4.2.8 | **Video** | 2d | 2010-10-08 | 2010-10-11 |  |  |  | 0d |  |  | 16h |  |
| 59 | 2.6.4.2.8.1 | Video | 1d | 2010-10-11 | 2010-10-11 | 56 |  |  | 0d |  | Đào Tuấn Anh | 8h |  |
| 60 | 2.6.4.2.8.2 | Thông tin khác | 1d | 2010-10-08 | 2010-10-08 | 57 |  |  | 1d |  | Cản Mạnh Tuấn | 8h |  |
| 61 | 2.6.4.2.9 | Các Danh mục | 4d | 2010-10-01 | 2010-10-06 | 47 |  |  | 0d |  | Lục Văn Tiến | 32h |  |
| 62 | 2.6.4.2.10 | Tin bài chi tiết | 2d | 2010-10-07 | 2010-10-08 | 61 |  |  | 0d |  | Lục Văn Tiến | 16h |  |
| 63 | 2.6.4.2.11 | In bài viết | 1d | 2010-10-11 | 2010-10-11 | 62 |  |  | 0d |  | Lục Văn Tiến | 8h |  |
| 64 | 2.6.4.2.12 | Thăm dò | 3d | 2010-10-01 | 2010-10-05 | 47 |  |  | 0d |  | Đỗ Nam Sơn | 24h |  |
| 65 | 2.6.4.2.13 | Tìm kiếm | 1d | 2010-10-06 | 2010-10-06 | 64 |  |  | 0d |  | Đỗ Nam Sơn | 8h |  |
| 66 | 2.6.4.2.14 | Email bài viết | 1d | 2010-10-07 | 2010-10-07 | 65 |  |  | 0d |  | Đỗ Nam Sơn | 8h |  |
| 67 | 2.6.4.2.15 | RSS | 2d | 2010-10-08 | 2010-10-11 | 66 |  |  | 0d |  | Đỗ Nam Sơn | 16h |  |
| 68 | 2.6.4.3 | Deploy | 1d | 2010-10-12 | 2010-10-12 | 48 |  |  | 0d |  | Đào Tuấn Anh | 8h |  |
| 69 | 3 | **Update** | 20d | 2010-09-06 A | 2010-10-01 |  | 50% | 10d | 10d |  |  | 32h | 16h |
| 70 | 3.1 | LayoutDAO | 2d | 2010-09-06 A | 2010-09-07 A |  | 100% |  |  |  | Cản Mạnh Tuấn | 16h | 16h |
| 71 | 3.2 | User, Visit | 2d | 2010-09-30 | 2010-10-01 | 35 |  |  | 10d |  | Đào Tuấn Anh | 16h |  |
| 72 | 4 | **Test** | 21d | 2010-09-17 A | 2010-10-15 |  | 15% | 17.85d | 0d |  |  | 96h | 14.4h |
| 73 | 4.1 | Back-end | 3d | 2010-09-17 | 2010-09-21 | 1 |  |  | 18d |  | Hoàng Thu Huyền | 24h |  |
| 74 | 4.2 | Trang Clip | 3d | 2010-09-21 A | 2010-09-23 | 8 | 60% | 1.2d | 16d |  | Hoàng Thu Huyền | 24h | 14.4h |
| 75 | 4.3 | Trang Tiếng Anh | 3d | 2010-10-13 | 2010-10-15 | 23 |  |  | 0d |  | Hoàng Thu Huyền | 24h |  |
| 76 | 4.4 | Trang Thể thao | 3d | 2010-10-13 | 2010-10-15 | 46 |  |  | 0d |  | Hoàng Thu Huyền | 24h |  |
