# Plan_VietNamNet_2010-10_Interation

Schedule from MS Project, 2010-10-14 to 2010-11-18, A marks actual dates.

## Calendars

- Standard: Mon-Fri 08:00-12:00, 13:00-17:00; Sat-Sun off.

## Resources

| Resource |
| --- |
| Đỗ Nam Sơn |
| Đào Tuấn Anh |
| Hoàng Thu Huyền |
| Nguyễn Như Tuấn |
| Cản Mạnh Tuấn |
| Lục Văn Tiến |
| Lê Nguyễn Lâm |
| Nguyễn Phú Minh Khuê |
| Dương Hải Phong |
| Lê Trung Kiên |

## Schedule

| ID | WBS | Task | Duration | Start | Finish | Predecessors | Complete | Remaining | Total slack | Free slack | Constraint | Resources | Work | Actual work |
| --- | --- | --- | --- | --- | --- | --- | --- | --- | --- | --- | --- | --- | --- | --- |
| 1 | 1 | **Trang VNN v1** | 8d | 2010-10-14 A | 2010-10-25 A |  | 100% |  |  |  |  |  | 128h | 128h |
| 2 | 1.1 | Hoàn thiện trang giao diện | 4d | 2010-10-14 A | 2010-10-19 A |  | 100% |  |  |  |  | Cản Mạnh Tuấn; Lục Văn Tiến | 64h | 64h |
| 3 | 1.2 | Đưa quảng cáo | 2d | 2010-10-14 A | 2010-10-15 A |  | 100% |  |  |  |  | Lê Nguyễn Lâm | 16h | 16h |
| 4 | 1.3 | Chỉnh sửa trang giao diện | 3d | 2010-10-21 A | 2010-10-25 A |  | 100% |  |  |  | start no earlier than 2010-10-21 | Cản Mạnh Tuấn; Lục Văn Tiến | 48h | 48h |
| 5 | 2 | **Trang tiếng Anh** | 6d | 2010-10-14 A | 2010-10-21 A |  | 100% |  |  |  |  |  | 48h | 48h |
| 6 | 2.1 | Apply tracking service | 1d | 2010-10-14 A | 2010-10-14 A |  | 100% |  |  |  |  | Đỗ Nam Sơn | 8h | 8h |
| 7 | 2.2 | Test | 1d | 2010-10-15 A | 2010-10-15 A | 6 | 100% |  |  |  |  | Hoàng Thu Huyền | 8h | 8h |
| 8 | 2.3 | Sửa lỗi | 2d | 2010-10-15 A | 2010-10-18 A | 6 | 100% |  |  |  |  | Đỗ Nam Sơn | 16h | 16h |
| 9 | 2.4 | Deploy | 1d | 2010-10-19 A | 2010-10-19 A | 8 | 100% |  |  |  |  | Đào Tuấn Anh | 8h | 8h |
| 10 | 2.5 | Search google | 1d | 2010-10-21 A | 2010-10-21 A |  | 100% |  |  |  | start no earlier than 2010-10-21 | Đỗ Nam Sơn | 8h | 8h |
| 11 | 3 | **V-CMS** | 12d | 2010-10-20 A | 2010-11-04 |  | 93% | 0.8d | 10d |  |  |  | 120h | 112h |
| 12 | 3.1 | Fix lỗi gen image png | 1d | 2010-10-20 A | 2010-10-20 A | 5 | 100% |  |  |  |  | Đào Tuấn Anh | 8h | 8h |
| 13 | 3.2 | Apply cache cho test | 1d | 2010-10-21 A | 2010-10-21 A | 12 | 100% |  |  |  |  | Đào Tuấn Anh | 8h | 8h |
| 14 | 3.3 | Fix lỗi hiển thị quảng cáo | 1d | 2010-10-22 A | 2010-10-22 A | 13 | 100% |  |  |  |  | Đào Tuấn Anh | 8h | 8h |
| 15 | 3.4 | Optimize các thao tác người dùng | 5d | 2010-10-25 A | 2010-10-29 A | 14 | 100% |  |  |  |  | Đào Tuấn Anh | 40h | 40h |
| 16 | 3.5 | Tracking bài viết | 2d | 2010-10-28 A | 2010-10-29 A |  | 100% |  |  |  |  | Đỗ Nam Sơn | 16h | 16h |
| 17 | 3.6 | Tài liệu deploy server | 2d | 2010-10-29 A | 2010-11-01 |  | 50% | 1d | 6d | 0d |  | Đào Tuấn Anh | 16h | 8h |
| 18 | 3.7 | Optimize các thao tác người dùng | 3d | 2010-11-02 A | 2010-11-04 A | 17 | 100% |  |  |  |  | Đào Tuấn Anh | 24h | 24h |
| 19 | 4 | **Trang thể thao** | 19d | 2010-10-14 A | 2010-11-09 |  | 90% | 1.87d | 6d | 0d |  |  | 356h | 319.2h |
| 20 | 4.1 | Thiết kế | 2d | 2010-10-14 A | 2010-10-15 A |  | 100% |  |  |  |  | Lê Nguyễn Lâm | 16h | 16h |
| 21 | 4.2 | **Dựng HTML** | 4.5d | 2010-10-21 A | 2010-10-27 A |  | 100% |  |  |  |  |  | 52h | 52h |
| 22 | 4.2.1 | Trang chủ | 3d | 2010-10-22 A | 2010-10-26 A | 20 | 100% |  |  |  | start no earlier than 2010-10-22 | Lê Nguyễn Lâm | 24h | 24h |
| 23 | 4.2.2 | Trang danh mục | 0.5d | 2010-10-26 A | 2010-10-26 A | 22 | 100% |  |  |  |  | Lê Nguyễn Lâm | 4h | 4h |
| 24 | 4.2.3 | Trang tin chi tiết | 1d | 2010-10-26 A | 2010-10-27 A | 23 | 100% |  |  |  |  | Lê Nguyễn Lâm | 8h | 8h |
| 25 | 4.2.4 | Hiệu ứng | 2d | 2010-10-21 A | 2010-10-22 A |  | 100% |  |  |  | start no earlier than 2010-10-21 | Nguyễn Như Tuấn | 16h | 16h |

| ID | WBS | Task | Duration | Start | Finish | Predecessors | Complete | Remaining | Total slack | Free slack | Constraint | Resources | Work | Actual work |
| --- | --- | --- | --- | --- | --- | --- | --- | --- | --- | --- | --- | --- | --- | --- |
| 26 | 4.3 | **Dựng trang** | 8d | 2010-10-27 A | 2010-11-05 |  | 94% | 0.52d | 8d |  |  |  | 124h | 116h |
| 27 | 4.3.1 | Trang chủ | 3d | 2010-10-27 A | 2010-10-29 A | 22 | 100% |  |  |  |  | Cản Mạnh Tuấn | 24h | 24h |
| 28 | 4.3.2 | Trang tin chi tiết | 1d | 2010-11-01 A | 2010-11-01 A | 24 | 100% |  |  |  |  | Lục Văn Tiến | 8h | 8h |
| 29 | 4.3.3 | Trang in bài viết | 1d | 2010-11-02 A | 2010-11-02 A | 28 | 100% |  |  |  |  | Lục Văn Tiến | 8h | 8h |
| 30 | 4.3.4 | Các trang thông tin phụ | 1d | 2010-11-03 A | 2010-11-03 A | 29 | 100% |  |  |  |  | Lục Văn Tiến | 8h | 8h |
| 31 | 4.3.5 | Trang danh mục (tất cả) | 3d | 2010-11-01 A | 2010-11-03 A | 27 | 100% |  |  |  |  | Cản Mạnh Tuấn | 24h | 24h |
| 32 | 4.3.6 | Trang tích hợp với vnn | 0.5d | 2010-11-05 A | 2010-11-05 A | 21, 18 | 100% |  |  |  |  | Đào Tuấn Anh | 4h | 4h |
| 33 | 4.3.7 | Quảng cáo | 0.5d | 2010-11-05 A | 2010-11-05 A | 32, 21 | 100% |  |  |  |  | Đào Tuấn Anh | 4h | 4h |
| 34 | 4.3.8 | Trang Video | 1d | 2010-11-01 A | 2010-11-01 A |  | 100% |  |  |  | start no earlier than 2010-11-01 | Nguyễn Như Tuấn | 8h | 8h |
| 35 | 4.3.9 | Trang Photo | 2d | 2010-11-02 A | 2010-11-03 | 25, 34 | 50% | 1d | 10d |  |  | Nguyễn Như Tuấn | 16h | 8h |
| 36 | 4.3.10 | RSS | 0.5d | 2010-11-01 A | 2010-11-01 A |  | 100% |  |  |  | start no earlier than 2010-11-01 | Đỗ Nam Sơn | 4h | 4h |
| 37 | 4.3.11 | Tìm kiếm | 0.5d | 2010-11-01 A | 2010-11-01 A | 36 | 100% |  |  |  |  | Đỗ Nam Sơn | 4h | 4h |
| 38 | 4.3.12 | Thăm dò | 0.5d | 2010-11-02 A | 2010-11-02 A | 37 | 100% |  |  |  |  | Đỗ Nam Sơn | 4h | 4h |
| 39 | 4.3.13 | Phản hồi bài viết | 0.5d | 2010-11-02 A | 2010-11-02 A | 38 | 100% |  |  |  |  | Đỗ Nam Sơn | 4h | 4h |
| 40 | 4.3.14 | Email bài viết | 0.5d | 2010-11-03 A | 2010-11-03 A | 39 | 100% |  |  |  |  | Đỗ Nam Sơn | 4h | 4h |
| 41 | 4.4 | Dựng db | 1d | 2010-11-02 A | 2010-11-02 A |  | 100% |  |  |  | start no earlier than 2010-11-02 | Lê Trung Kiên | 8h | 8h |
| 42 | 4.5 | Deploy CMS | 0.5d | 2010-11-03 A | 2010-11-03 A | 41 | 100% |  |  |  |  | Đào Tuấn Anh | 4h | 4h |
| 43 | 4.6 | Test | 2d | 2010-11-08 A | 2010-11-09 A | 26 | 100% |  |  |  |  | Hoàng Thu Huyền | 16h | 16h |
| 44 | 4.7 | Chỉnh sửa | 2d | 2010-11-08 A | 2010-11-09 A | 26 | 100% |  |  |  |  | Cản Mạnh Tuấn; Đỗ Nam Sơn; Lục Văn Tiến; Nguyễn Như Tuấn; Đào Tuấn Anh | 80h | 80h |
| 45 | 4.8 | Hòm thư góp ý | 1d | 2010-11-03 | 2010-11-04 | 40 |  |  | 8.2d | 0d |  | Đỗ Nam Sơn | 8h |  |
| 46 | 4.9 | Trò chơi dự đoán bóng đá | 2d | 2010-11-04 A | 2010-11-08 | 45 | 50% | 1d | 7.2d | 0d |  | Đỗ Nam Sơn; Nguyễn Như Tuấn | 32h | 16h |
| 47 | 4.10 | Deploy | 1d | 2010-11-08 A | 2010-11-09 | 46 | 70% | 0.3d | 6.5d |  |  | Đào Tuấn Anh; Nguyễn Phú Minh Khuê | 16h | 11.2h |
| 48 | 5 | **Speed Test** | 20d | 2010-10-14 A | 2010-11-10 |  | 50% | 10d | 6d |  |  |  | 16h | 8h |
| 49 | 5.1 | Front-end | 1d | 2010-10-14 A | 2010-10-14 A |  | 100% |  |  |  |  | Đỗ Nam Sơn | 8h | 8h |
| 50 | 5.2 | Process | 1d | 2010-11-10 | 2010-11-10 | 19 |  |  | 6d |  |  | Đỗ Nam Sơn | 8h |  |

Notes:
- 35: Bao gồm cả thiết kế, dựng html, js
- 36: Chưa kię̉m tra từng link
- 37: Chưa thęm các box và quảng cáo
- 38: done
- 40: Chưa test
- 46: Đã thống nhất đầu bài với chị Huyę̀n

| ID | WBS | Task | Duration | Start | Finish | Predecessors | Complete | Remaining | Total slack | Constraint | Resources | Work | Actual work |
| --- | --- | --- | --- | --- | --- | --- | --- | --- | --- | --- | --- | --- | --- |
| 51 | 6 | **Dựng trang VNN theo mô hình** | 14d | 2010-10-14 A | 2010-11-02 A |  | 100% |  |  |  |  | 288h | 288h |
| 52 | 6.1 | Review, apply security policy | 3d | 2010-10-14 A | 2010-10-18 A |  | 100% |  |  |  | Nguyễn Phú Minh Khuê | 24h | 24h |
| 53 | 6.2 | Form theo dõi, báo cáo hệ thống | 2d | 2010-10-14 A | 2010-10-15 A |  | 100% |  |  |  | Dương Hải Phong | 16h | 16h |
| 54 | 6.3 | Backup dữ liệu | 3d | 2010-10-19 A | 2010-10-21 A | 52 | 100% |  |  |  | Nguyễn Phú Minh Khuê | 24h | 24h |
| 55 | 6.4 | Theo dõi hệ thống | 14d | 2010-10-14 A | 2010-11-02 A |  | 100% |  |  |  | Nguyễn Phú Minh Khuê; Dương Hải Phong | 224h | 224h |
| 56 | 7 | **Test tải hệ thống VNN mới** | 26d? | 2010-10-14 A | 2010-11-18 |  | 52% | 12.55d? | 0d |  |  | 344h | 120h |
| 57 | 7.1 | Kế hoạch thử nghiệm | 1d | 2010-10-18 A | 2010-10-18 A | 53 | 100% |  |  |  | Dương Hải Phong | 8h | 8h |
| 58 | 7.2 | Báo cáo tình hình | 14d | 2010-10-14 A | 2010-11-02 A |  | 100% |  |  |  | Nguyễn Phú Minh Khuê | 112h | 112h |
| 59 | 7.3 | Optimize hệ thống | 14d? | 2010-11-01 | 2010-11-18 |  |  |  | 0d | start no earlier than 2010-11-01 | Đào Tuấn Anh; Nguyễn Phú Minh Khuê | 224h |  |

Notes:
- 55: Hàng ngày
- 58: Hàng ngày
- 59: Hàng ngày
