# Plan_VietNamNet_v0_Interation

Schedule from MS Project, 2010-08-05 to 2010-09-03, A marks actual dates.

## Calendars

- Standard: Mon-Fri 08:00-12:00, 13:00-17:00; Sat-Sun off.

## Resources

| Resource |
| --- |
| Đỗ Nam Sơn |
| Đào Tuấn Anh |
| Cản Mạnh Tuấn |
| Lục Văn Tiến |
| Hoàng Thu Huyền |
| Lê Nguyễn Lâm |

## Schedule

| ID | WBS | Task | Duration | Start | Finish | Predecessors | Complete | Remaining | Total slack | Free slack | Resources | Work | Actual work |
| --- | --- | --- | --- | --- | --- | --- | --- | --- | --- | --- | --- | --- | --- |
| 1 | 1 | **Back-end** | 20d | 2010-08-05 A | 2010-09-01 |  | 31% | 13.71d | 2d |  |  | 224h | 70.4h |
| 2 | 1.1 | Quảng cáo | 6d | 2010-08-05 A | 2010-08-12 |  | 80% | 1.2d | 0d |  | Đào Tuấn Anh | 48h | 38.4h |
| 3 | 1.2 | Thăm dò | 8d | 2010-08-05 A | 2010-08-16 |  | 50% | 4d | 2d | 0d | Đỗ Nam Sơn | 64h | 32h |
| 4 | 1.3 | Nhuận bút | 4d | 2010-08-27 | 2010-09-01 | 16 |  |  | 2d |  | Đỗ Nam Sơn | 32h |  |
| 5 | 1.4 | Tracking | 4d | 2010-08-25 | 2010-08-30 | 19, 7 |  |  | 0d |  | Đào Tuấn Anh | 32h |  |
| 6 | 1.5 | Thống kê, báo cáo | 3d | 2010-08-18 | 2010-08-20 | 14 |  |  | 2d | 0d | Đỗ Nam Sơn | 24h |  |
| 7 | 1.6 | Tin bài CMS | 3d | 2010-08-20 | 2010-08-24 | 13 |  |  | 0d |  | Đào Tuấn Anh | 24h |  |
| 8 | 2 | **Font-end** | 20d | 2010-08-05 A | 2010-09-01 |  | 29% | 14.24d | 0d |  |  | 456h | 172.8h |
| 9 | 2.1 | **Layout** | 16d | 2010-08-05 A | 2010-08-26 |  | 45% | 8.8d | 3d | 0d | Cản Mạnh Tuấn; Lục Văn Tiến; Lê Nguyễn Lâm | 384h | 172.8h |
| 10 | 2.1.1 | Trang chủ | 8d | 2010-08-05 A | 2010-08-16 |  | 90% | 0.8d | 3d | 0d |  |  |  |
| 11 | 2.1.2 | Danh mục | 4d | 2010-08-17 | 2010-08-20 | 10 |  |  | 2d | 0d |  |  |  |
| 12 | 2.1.3 | Tin bài chi tiết | 4d | 2010-08-23 | 2010-08-26 | 11 |  |  | 2d |  |  |  |  |
| 13 | 2.2 | Quảng cáo | 2d | 2010-08-18 | 2010-08-19 | 2, 19 |  |  | 0d |  | Đào Tuấn Anh | 16h |  |
| 14 | 2.3 | Thăm dò | 1d | 2010-08-17 | 2010-08-17 | 3 |  |  | 2d | 0d | Đỗ Nam Sơn | 8h |  |
| 15 | 2.4 | Tracking | 2d | 2010-08-31 | 2010-09-01 | 5, 13 |  |  | 0d |  | Đào Tuấn Anh | 16h |  |
| 16 | 2.5 | Searching | 4d | 2010-08-23 | 2010-08-26 | 6 |  |  | 2d | 0d | Đỗ Nam Sơn | 32h |  |
| 17 | 3 | **Update** | 12d | 2010-08-13 | 2010-08-30 |  |  |  | 0d |  |  | 40h |  |
| 18 | 3.1 | Cấu trúc db phần Tin bài | 1.5d | 2010-08-13 | 2010-08-16 | 2 |  |  | 0d |  | Đào Tuấn Anh | 12h |  |
| 19 | 3.2 | CMS theo cấu trúc mới | 1.5d | 2010-08-16 | 2010-08-17 | 18 |  |  | 0d |  | Đào Tuấn Anh | 12h |  |
| 20 | 3.3 | LayoutDAO | 2d | 2010-08-27 | 2010-08-30 | 9, 19 |  |  | 4d |  | Đào Tuấn Anh | 16h |  |
| 21 | 4 | **Test** | 12d | 2010-08-17 | 2010-09-01 |  |  |  | 3d |  |  | 72h |  |
| 22 | 4.1 | Back-end | 5d | 2010-08-17 | 2010-08-23 | 3, 2 |  |  | 10d |  | Hoàng Thu Huyền | 40h |  |
| 23 | 4.2 | Font-end | 4d | 2010-08-27 | 2010-09-01 | 9 |  |  | 2d |  | Hoàng Thu Huyền | 32h |  |
| 24 | 5 | **Fixbug** | 13d | 2010-08-18 | 2010-09-03 |  |  |  | 0d |  |  | 144h |  |
| 25 | 5.1 | Layout | 4d | 2010-08-27 | 2010-09-01 | 9 |  |  | 2d |  | Cản Mạnh Tuấn; Lục Văn Tiến | 64h |  |
| 26 | 5.2 | Quảng cáo | 2d | 2010-08-20 | 2010-08-23 | 13 |  |  | 9d |  | Đào Tuấn Anh | 16h |  |
| 27 | 5.3 | Thăm dò | 2d | 2010-08-18 | 2010-08-19 | 14, 4 |  |  | 11d |  | Đỗ Nam Sơn | 16h |  |
| 28 | 5.4 | Tracking | 2d | 2010-09-02 | 2010-09-03 | 15 |  |  | 0d |  | Đào Tuấn Anh | 16h |  |
| 29 | 5.5 | Searching | 2d | 2010-08-27 | 2010-08-30 | 16, 27 |  |  | 4d |  | Đỗ Nam Sơn | 16h |  |
| 30 | 5.6 | Thống kê, báo cáo | 2d | 2010-08-23 | 2010-08-24 | 6 |  |  | 8d |  | Đỗ Nam Sơn | 16h |  |
